# C:\Users\chistyakov\Desktop\Практика АММ\умный склад\Основные вехи_кор

Schedule from MS Project, 2021-05-28 to 2022-09-20.
RePack by SPecialiST

## Calendars

- Стандартный: Mon-Fri 09:00-13:00, 14:00-18:00; Sat-Sun off.

## Resources

| Resource |
| --- |
| Чистяков |
| Лапушков |
| Синицын |
| Рейхерт |
| Чекулаев |

## Schedule

| ID | WBS | Task | Duration | Start | Finish | Predecessors | Baseline start | Baseline finish | Baseline duration | Total slack | Free slack | Constraint | Resources | Work | № |
| --- | --- | --- | --- | --- | --- | --- | --- | --- | --- | --- | --- | --- | --- | --- | --- |
| 1 | 1 | **Вариант 2 "Разработка собственного ПО для ТСД"** | 343d | 2021-05-28 | 2022-09-20 |  | 2021-05-11 | 2021-09-13 | 90d | 0d |  |  |  | 4088h | 31 |
| 2 | 1.1 | Разработка ЧТЗ на реализацию системы "Учет МПЗ с применением штрих-кодов" | 40d | 2022-07-27 | 2022-09-20 |  | 2021-05-11 | 2021-07-05 | 40d | 0d |  | start no earlier than 2022-07-27 | Синицын; Чекулаев; Чистяков | 960h | 32 |
| 3 | 1.2 | **Разработка программного обеспечения для ТСД под Android (универсальная платформа)** | 53d | 2021-05-28 | 2021-08-10 |  | 2021-05-28 | 2021-08-10 | 53d | 266d |  |  |  | 1584h |  |
| 4 | 1.2.1 | Запуск мобильного клиента на ТСД | 7d | 2021-05-28 | 2021-06-07 |  | 2021-05-28 | 2021-06-07 | 7d | 266d | 0d |  | Рейхерт; Синицын; Чистяков | 168h |  |
| 5 | 1.2.2 | Авторизация и вход в ТСД | 7d | 2021-06-08 | 2021-06-16 | 4 | 2021-06-08 | 2021-06-16 | 7d | 266d | 0d |  | Рейхерт; Синицын; Чистяков | 168h |  |
| 6 | 1.2.3 | Получение нового токена | 7d | 2021-06-08 | 2021-06-16 | 5SS | 2021-06-08 | 2021-06-16 | 7d | 305d | 0d |  | Рейхерт; Синицын; Чистяков | 168h |  |
| 7 | 1.2.4 | Получение справочников НСИ на ТСД | 7d | 2021-06-22 | 2021-06-30 | 4, 21 | 2021-06-22 | 2021-06-30 | 7d | 266d | 0d |  | Рейхерт; Синицын; Чистяков | 168h |  |
| 8 | 1.2.5 | Получение ДУ на ТСД | 7d | 2021-07-01 | 2021-07-09 | 7, 22 | 2021-07-01 | 2021-07-09 | 7d | 266d | 0d |  | Рейхерт; Синицын; Чистяков | 168h |  |
| 9 | 1.2.6 | Выбор,открытие ДУ | 4d | 2021-07-12 | 2021-07-15 | 8 | 2021-07-12 | 2021-07-15 | 4d | 266d | 0d |  | Рейхерт; Синицын; Чистяков | 96h |  |
| 10 | 1.2.7 | Обработка ДУ по типам | 14d | 2021-07-16 | 2021-08-04 | 9 | 2021-07-16 | 2021-08-04 | 14d | 266d | 0d |  | Рейхерт; Синицын; Чистяков | 336h |  |
| 11 | 1.2.8 | Передача ДУ | 4d | 2021-08-05 | 2021-08-10 | 10 | 2021-08-05 | 2021-08-10 | 4d | 266d | 0d |  | Рейхерт; Синицын; Чистяков | 96h |  |
| 12 | 1.2.9 | Отложенная передача данных | 7d | 2021-07-16 | 2021-07-26 | 10SS | 2021-07-16 | 2021-07-26 | 7d | 277d | 11d |  | Рейхерт; Синицын; Чистяков | 168h |  |
| 13 | 1.2.10 | Завершение работы с ТСД | 2d | 2021-06-17 | 2021-06-18 | 5 | 2021-06-17 | 2021-06-18 | 2d | 327d |  |  | Рейхерт; Синицын; Чистяков | 48h |  |
| 14 | 1.3 | **Разработка сервисов взимодействия с Odata** | 10d | 2021-06-08 | 2021-06-21 |  | 2021-06-08 | 2021-06-21 | 10d | 266d |  |  |  | 80h | 35 |
| 15 | 1.3.1 | Передача справочников НСИ | 5d | 2021-06-08 | 2021-06-14 | 5SS | 2021-06-08 | 2021-06-14 | 5d | 266d | 0d |  | Лапушков | 40h |  |
| 16 | 1.3.2 | Передача ДУ | 5d | 2021-06-15 | 2021-06-21 | 15 | 2021-06-15 | 2021-06-21 | 5d | 268d | 0d |  | Лапушков | 40h |  |
| 17 | 1.4 | **Серверная часть системы** | 60d | 2021-06-08 | 2021-08-30 |  | 2021-06-08 | 2021-08-30 | 60d | 266d | 0d |  |  | 1064h |  |
| 18 | 1.4.1 | Выдача нового токена | 7d | 2021-06-08 | 2021-06-16 | 6SS | 2021-06-08 | 2021-06-16 | 7d | 305d | 0d |  | Лапушков | 56h |  |
| 19 | 1.4.2 | Определение роли и модели пользователя | 7d | 2021-06-17 | 2021-06-25 | 18 | 2021-06-17 | 2021-06-25 | 7d | 305d | 0d |  | Лапушков | 56h |  |
| 20 | 1.4.3 | Проверка корректности авторизационных данных | 7d | 2021-06-28 | 2021-07-06 | 19, 6 | 2021-06-28 | 2021-07-06 | 7d | 305d |  |  | Лапушков | 56h |  |
| 21 | 1.4.4 | Получение справочников НСИ и передача на ТСД | 5d | 2021-06-15 | 2021-06-21 | 15 | 2021-06-15 | 2021-06-21 | 5d | 266d | 0d |  | Лапушков | 40h |  |
| 22 | 1.4.5 | Получение ДУ и передача на ТСД | 5d | 2021-06-22 | 2021-06-28 | 16 | 2021-06-22 | 2021-06-28 | 5d | 268d | 2d |  | Лапушков | 40h |  |
| 23 | 1.4.6 | Обработка ДУ на серверной части | 7d | 2021-08-11 | 2021-08-19 | 11, 12 | 2021-08-11 | 2021-08-19 | 7d | 266d | 0d |  | Лапушков | 56h |  |
| 24 | 1.4.7 | Передача данных в ERP и их обработка | 7d | 2021-08-20 | 2021-08-30 | 23 | 2021-08-20 | 2021-08-30 | 7d | 266d |  |  | Лапушков | 56h |  |

Notes:
- 1: Text30: Хорошо бы сделать критический путь сквозной на весь проект, что бы влияние сдвигов смотреть
- 2: Комментарий: В ЧТЗ учтены требования на разработку ПО для ТСД под Android (универсальная платформа)
- 14: Комментарий: Signal R, WEB сервисы. / Text30: Выполнено

| ID | WBS | Task | Duration | Start | Finish | Predecessors | Baseline start | Baseline finish | Baseline duration | Total slack | Free slack | Resources | Work | № | Text2 |
| --- | --- | --- | --- | --- | --- | --- | --- | --- | --- | --- | --- | --- | --- | --- | --- |
| 25 | 1.4.8 | **Администрирование** | 44d | 2021-06-08 | 2021-08-06 |  | 2021-06-08 | 2021-08-06 | 44d | 282d |  |  | 704h |  |  |
| 26 | 1.4.8.1 | Создание пользователя | 7d | 2021-06-08 | 2021-06-16 | 5SS | 2021-06-08 | 2021-06-16 | 7d | 282d | 0d | Лапушков; Синицын | 112h |  |  |
| 27 | 1.4.8.2 | Создание роли пользователя | 7d | 2021-06-17 | 2021-06-25 | 26 | 2021-06-17 | 2021-06-25 | 7d | 282d | 0d | Лапушков; Синицын | 112h |  |  |
| 28 | 1.4.8.3 | Присвоение пользователю роли | 4d | 2021-06-28 | 2021-07-01 | 27 | 2021-06-28 | 2021-07-01 | 4d | 282d | 0d | Лапушков; Синицын | 64h |  |  |
| 29 | 1.4.8.4 | Настройка параметров токена | 4d | 2021-07-02 | 2021-07-07 | 28 | 2021-07-02 | 2021-07-07 | 4d | 282d | 0d | Лапушков; Синицын | 64h |  |  |
| 30 | 1.4.8.5 | Ведение справочника ТСД | 4d | 2021-07-08 | 2021-07-13 | 29 | 2021-07-08 | 2021-07-13 | 4d | 282d | 0d | Лапушков; Синицын | 64h |  |  |
| 31 | 1.4.8.6 | Настройка модели роли пользователя | 7d | 2021-07-14 | 2021-07-22 | 30 | 2021-07-14 | 2021-07-22 | 7d | 282d | 0d | Лапушков; Синицын | 112h |  |  |
| 32 | 1.4.8.7 | Настройка логирования | 7d | 2021-07-23 | 2021-08-02 | 31 | 2021-07-23 | 2021-08-02 | 7d | 282d | 0d | Лапушков; Синицын | 112h |  |  |
| 33 | 1.4.8.8 | Настройка удаленной печати | 4d | 2021-08-03 | 2021-08-06 | 32 | 2021-08-03 | 2021-08-06 | 4d | 282d |  | Лапушков; Синицын | 64h |  |  |
| 34 | 1.5 | **Подготовка и проведение испытаний системы "Учет МПЗ с применением штрих-кодов"** | 20d | 2021-08-17 | 2021-09-13 |  | 2021-08-17 | 2021-09-13 | 20d | 266d |  |  | 400h |  |  |
| 35 | 1.5.1 | Разработка программы предварительных испытаний,включая контрольные примеры | 10d | 2021-08-17 | 2021-08-30 | 17FS-10d | 2021-08-17 | 2021-08-30 | 10d | 266d | 0d | Синицын; Чистяков | 160h | 37 |  |
| 36 | 1.5.2 | Проведение предварительных испытаний | 10d | 2021-08-31 | 2021-09-13 | 35 | 2021-08-31 | 2021-09-13 | 10d | 266d |  | Синицын; Лапушков; Чистяков | 240h |  | Заказчик и Исполнитель |
